# Rascal Master Schedule

Schedule from GanttProject, 2014-03-06 to 2014-08-01.
Saint Louis University
This schedule lists all of mission milestones associated with the Rascal mission, which is being co-developed with resources from Saint Louis University and the Boeing Company.

## Calendars

- Project calendar: Mon-Sun working.

## Resources

| Resource | Group |
| --- | --- |
| Tom Moline | Primary Spacecraft Program Manager |
| Nate Richard | Secondary Spacecraft Program Manager |
| Jennifer Babb | DCK Lead |
| Tyler Olson | PRP Lead |
| Kate Clements | Primary ADC Co-Lead |
| Nathan Bossart | Primary PLD Lead |
| Joe Mayer |  |
| Christopher Berry |  |
| Alex Howard | Secondary PWR Lead |

## Schedule

| ID | WBS | Task | Type | Duration | Start | Finish | Predecessors | Resources |
| --- | --- | --- | --- | --- | --- | --- | --- | --- |
| 1 | 1 | **Rascal Mission CONOPS** |  | 28d | 2014-03-06 | 2014-04-02 |  | Tom Moline; Nate Richard |
| 2 | 1.1 | Rascal CONOPS Trade Study |  | 15d | 2014-03-06 | 2014-03-20 |  | Tom Moline; Nate Richard |
| 3 | 1.2 | Rascal CONOPS Selection | milestone | 0d | 2014-03-20 | 2014-03-20 |  |  |
| 4 | 1.3 | CONOPS Revision 1 |  | 12d | 2014-03-21 | 2014-04-01 |  |  |
| 5 | 1.4 | Rascal Mission Objective and Success Criterea |  | 12d | 2014-03-21 | 2014-04-01 | 4SS | Tom Moline; Nate Richard |
| 6 | 1.5 | Preliminary Rascal RVM |  | 12d | 2014-03-21 | 2014-04-01 | 4SS | Tom Moline; Nate Richard |
| 7 | 1.6 | Mission Status Review | milestone | 0d | 2014-04-02 | 2014-04-02 | 6 |  |
| 8 | 2 | **Primary ADC Subsystem** |  | 38d | 2014-03-17 | 2014-04-23 |  | Tom Moline [75%]; Kate Clements [25%] |
| 9 | 2.1 | Preliminary Relative Orbit Analysis |  | 5d | 2014-03-17 | 2014-03-21 |  | Tom Moline |
| 10 | 2.2 | Preliminary Controls Analysis |  | 4d | 2014-03-22 | 2014-03-25 | 9 | Tom Moline |
| 11 | 2.3 | Preliminary Controls Matlab Algorithm |  | 14d | 2014-03-26 | 2014-04-08 | 10 |  |
| 12 | 2.4 | Secondary Controls Matlab Algorithm |  | 15d | 2014-04-09 | 2014-04-23 | 11 |  |
| 13 | 2.5 | Preliminary ADC Sensor Research |  | 12d | 2014-03-21 | 2014-04-01 |  | Kate Clements |
| 14 | 3 | **Primary PLD Subsystem** |  | 46d | 2014-03-21 | 2014-05-05 |  |  |
| 15 | 3.1 | Verify Operation of Hardware System |  | 4d | 2014-03-21 | 2014-03-24 |  |  |
| 16 | 3.2 | Hardware System Integration |  | 7d | 2014-03-25 | 2014-03-31 | 15 |  |
| 17 | 3.3 | Verify Integrated Hardware System |  | 7d | 2014-04-01 | 2014-04-07 | 16 |  |
| 18 | 3.4 | Configure Hardware Drivers |  | 7d | 2014-04-08 | 2014-04-14 | 17 |  |
| 19 | 3.5 | Finalize and Verify Software in SDK |  | 7d | 2014-04-15 | 2014-04-21 | 18 |  |
| 20 | 3.6 | Verify Integrated Hardware and Software System |  | 7d | 2014-04-22 | 2014-04-28 | 19 |  |
| 21 | 3.7 | Test, Calibrate, and Demonstrate |  | 7d | 2014-04-29 | 2014-05-05 | 20 |  |
| 22 | 4 | **PRP Subsystem** |  | 134d | 2014-03-21 | 2014-08-01 |  |  |
| 23 | 4.1 | Preliminary PRP System Research |  | 12d | 2014-03-21 | 2014-04-01 |  | Tyler Olson |
| 24 | 4.2 | **Prototype Design** |  | 29d | 2014-03-24 | 2014-04-21 |  |  |
| 25 | 4.2.1 | Coordinate System Definitions |  | 5d | 2014-03-24 | 2014-03-28 |  |  |
| 26 | 4.2.2 | Sizing Requirements |  | 5d | 2014-03-24 | 2014-03-28 |  |  |
| 27 | 4.2.3 | DeltaV Requirements |  | 12d | 2014-03-24 | 2014-04-04 |  |  |
| 28 | 4.2.4 | Tank Design |  | 22d | 2014-03-24 | 2014-04-14 |  |  |
| 29 | 4.2.5 | Thruster Design/Layout |  | 22d | 2014-03-24 | 2014-04-14 |  |  |
| 30 | 4.2.6 | Valve Integration Design |  | 15d | 2014-04-07 | 2014-04-21 |  |  |
| 31 | 4.2.7 | Valve Testing |  | 15d | 2014-04-07 | 2014-04-21 | 30SS |  |

Notes:
- 1: All tasks realted to defining mission requirements, goals, architecture, etc.
- 2: Trade study comparing missions with and without docking
- 3: Final day to decide which CONOPS to pursue
- 4: First revision of CONOPS with docking.
- 5: Determine success criterea for mission execution, as defined by CONOPS and mission objective.
- 6: Requirments Verification Matrix for Boeing delivery
- 8: Primary ADC Tasks for the Rascal EDU Work
- 9: First principles and trend analysis for relative motion betwee two spacecraft
- 10: Analyzing ideal oribt path for docking mission type, as to determine the affect of sensor noise, pertubatoins, etc.
- 11: Implementing controls analysis into Matlab for testing and simulation
- 13: Figure out what is necessary/available for determining local spacecraft orientation/inertial position.
- 14: All tasks associated with the PLD subsystem for work on Rascal EDU
- 22: All tasks associated with thePRP subsystem for work on Rascal EDU
- 23: Figuring out the coordinate system terminology that is to be incorperated into the design, picking volume constraints, defining system performance characteristics, etc.

| ID | WBS | Task | Duration | Start | Finish | Predecessors | Resources |
| --- | --- | --- | --- | --- | --- | --- | --- |
| 32 | 4.3 | **Functional Prototype** | 29d | 2014-04-21 | 2014-05-19 |  |  |
| 33 | 4.3.1 | Print Prototype | 8d | 2014-04-21 | 2014-04-28 |  |  |
| 34 | 4.3.2 | Valve Integration | 8d | 2014-04-28 | 2014-05-05 |  |  |
| 35 | 4.3.3 | Functional Testing | 15d | 2014-05-05 | 2014-05-19 |  |  |
| 36 | 4.4 | **Functional Engineering Unit** | 75d | 2014-05-19 | 2014-08-01 |  |  |
| 37 | 4.4.1 | Print Engineering Unit | 15d | 2014-05-19 | 2014-06-02 |  |  |
| 38 | 4.4.2 | Functional Testing | 61d | 2014-06-02 | 2014-08-01 |  |  |
| 39 | 4.4.3 | Pressure Testing | 22d | 2014-06-09 | 2014-06-30 |  |  |
| 40 | 4.4.4 | Environmental Testing | 40d | 2014-06-23 | 2014-08-01 |  |  |
| 41 | 5 | **Primary CDH Subsystem** | 17d | 2014-03-21 | 2014-04-06 |  |  |
| 42 | 5.1 | Review Boeing Colony-II Bus User Guide | 5d | 2014-03-21 | 2014-03-25 |  |  |
| 43 | 5.2 | Preliminary Spacecraft Functional Block Diagram | 12d | 2014-03-26 | 2014-04-06 | 42 |  |
| 44 | 6 | **DCK Subsystem** | 24d | 2014-03-21 | 2014-04-13 |  |  |
| 45 | 6.1 | Define Separation Requirements | 12d | 2014-03-21 | 2014-04-01 |  | Tom Moline; Jennifer Babb |
| 46 | 6.2 | Preliminary Docking Mechanism Research | 12d | 2014-03-21 | 2014-04-01 |  | Jennifer Babb |
| 47 | 6.3 | Assess Primary Spacecraft Docking Integration | 12d | 2014-03-21 | 2014-04-01 | 46SS |  |
| 48 | 6.4 | Preliminary Methodology Trade Study | 12d | 2014-04-02 | 2014-04-13 | 46 |  |
| 49 | 7 | **Secondary STR Subsystem** | 12d | 2014-03-21 | 2014-04-01 |  |  |
| 50 | 7.1 | Review Previous Skeleton Design Work | 5d | 2014-03-21 | 2014-03-25 |  | Christopher Berry |
| 51 | 7.2 | Preliminary Mass Budget | 8d | 2014-03-25 | 2014-04-01 |  | Christopher Berry |
| 52 | 7.3 | Preliminary Component Listing | 12d | 2014-03-21 | 2014-04-01 |  |  |
| 53 | 8 | **Secondary COM Subsystem** | 12d | 2014-03-21 | 2014-04-01 |  |  |
| 54 | 8.1 | Secondary Link Budget Analysis | 5d | 2014-03-21 | 2014-03-25 |  |  |
| 55 | 8.2 | Preliminary Component Research | 12d | 2014-03-21 | 2014-04-01 |  |  |

Notes:
- 41: All tasks associated with the primary CDH subsystem for work on Rascal EDU
- 42: Look-over the user's guide provided by Boeing, as to determine the communication protocal being used between SLU and Colony-II, as well as the type of sensor information being passed between each.
- 43: Determine functional block diagram for interface between each portion of SLU and Boeing side of primary spacecraft.
- 44: All tasks associated with the DCK subsystem for work on Rascal EDU
- 45: Important in determining which designs are feasible. Will result from analysis being done by ADC team.
- 46: Reveiw docking mechanism heritage and determine whether or not it is necessary to have separate dockin/initial separation mechanisms.
- 47: Determine orientation of the Colony-II bus and the feasibility of integrating dockin components into its system.
- 48: Based on research, determine best method of pursuing docking.
- 49: All tasks associated with the Secondary STR subsystem for work on Rascal EDU
- 50: Look over previous skeletion design work (As done by Christopher Berry), and determine what needs to be done going forward with its design.
- 51: Preliminary mass budget that allocates, as percentage of total spacecraft mass, subsystem mass properties.
- 52: Determine components necessary to integrate all s/c components.
- 53: All tasks associated with the Secondary COM subsystem for work on Rascal EDU
- 54: Cointinue assessing link budget, as to determine feasibility of inter-satellite communication.
- 55: Research the components necessary to acheive mission goals (inter-satellite communication and ground downlink capabilities).

| ID | WBS | Task | Type | Duration | Start | Finish | Predecessors | Resources |
| --- | --- | --- | --- | --- | --- | --- | --- | --- |
| 56 | 9 | **Secondary PWR Subsystem** |  | 26d | 2014-03-21 | 2014-04-15 |  |  |
| 57 | 9.1 | Secondary Power Budget |  | 12d | 2014-03-21 | 2014-04-01 |  | Alex Howard |
| 58 | 9.2 | Preliminary Component Selection |  | 14d | 2014-04-02 | 2014-04-15 | 57 |  |
| 59 | 10 | **Secondary ADC Subsystem** |  | 33d | 2014-03-21 | 2014-04-22 |  |  |
| 60 | 10.1 | Preliminary Detumbling Analysis |  | 19d | 2014-03-21 | 2014-04-08 |  |  |
| 61 | 10.2 | Preliminary Detumbling Requirements |  | 7d | 2014-04-09 | 2014-04-15 | 60 |  |
| 62 | 10.3 | Preliminary Detumbling Component Selection |  | 14d | 2014-04-09 | 2014-04-22 | 60 |  |
| 63 | 10.4 | Determine GPS Frequency |  | 5d | 2014-03-21 | 2014-03-25 |  |  |
| 64 | 11 | **Secondary CDH Subsystem** |  | 24d | 2014-03-21 | 2014-04-13 |  |  |
| 65 | 11.1 | Preliminary Spacecraft Functional Block Diagram |  | 12d | 2014-03-21 | 2014-04-01 |  |  |
| 66 | 11.2 | Preliminary Software System Overview |  | 12d | 2014-04-02 | 2014-04-13 | 65 |  |
| 67 | 12 | Student Graduation | milestone | 0d | 2014-05-15 | 2014-05-15 |  |  |
| 68 | 13 | EDU Delivery | milestone | 0d | 2014-08-01 | 2014-08-01 |  |  |

Notes:
- 56: All tasks associated with the Secondary PWR subsystem for work on Rascal EDU
- 57: Based on preliminary power budget work, begin determining max lifetime based on realistic battery and EPS figures, as well as on estimates of power consumption of the rest of the spacecraft.
- 58: Based on power requirements dictated by the power budget, determine the type and number of batteries necessary to execute the mission, as well as what's necessary to integrate said batteries into the design.
- 59: All tasks associated with the Secondary STR subsystem for work on Rascal EDU
- 60: Review work that was done for COPPER and Argus and determine how to implement said analysis for the secondary spacecraft and its tumbling mitigation.
- 62: Based on detumbling requirements, determine components necessary to acheive said requirements.
- 63: Based on accuracy information and necessary data.
- 64: All tasks associated with the Secondary CDH subsystem for work on Rascal EDU
- 65: Determine the subsystems necessary to execute mission goals, as well as the manner in which each subsystem interacts with the other.
- 66: Analyze previous software development for COPPER and Argus and determine what can be brought in for Rascal work and what needs to be added/taken away.
